# WBS ENZO Y ALEXIS

Schedule from MS Project, 2013-04-03 to 2014-04-15, 12 hours a day.

## Calendars

- Estándar: Mon off; Tue-Sat 07:00-19:00; Sun off. Exceptions (off unless hours are given): 2013-12-10 (Vacaciones).

## Resources

| Resource |
| --- |
| Analista Funcional I |
| Programador I |
| Programador II |
| Analista Funcional II |
| Adm. de Proyecto |

## Schedule

| ID | WBS | Task | Duration | Start | Finish | Predecessors | Total slack | Free slack |
| --- | --- | --- | --- | --- | --- | --- | --- | --- |
| 1 | 1 | **Proyecto: S.A.P.O.** | 268.54d? | 2013-04-03 08:00 | 2014-04-15 14:30 |  | -18.04d | 0d |
| 2 | 1.1 | **Gestión de Proyecto** | 96.83d? | 2013-04-03 08:00 | 2013-08-15 18:00 |  | 74.58d |  |
| 3 | 1.1.1 | **Alcance** | 14.5d | 2013-04-03 08:00 | 2013-04-23 14:00 |  | 74.58d | 0d |
| 4 | 1.1.1.1 | **Desarrollo idea de Proyecto** | 4.5d | 2013-04-03 08:00 | 2013-04-09 14:00 |  | 74.58d | 0d |
| 5 | 1.1.1.1.1 | Definir objetivos | 8h | 2013-04-03 08:00 | 2013-04-03 16:00 |  | 74.58d | 0d |
| 6 | 1.1.1.1.2 | Definir ámbito | 16h | 2013-04-03 16:00 | 2013-04-05 08:00 | 5 | 74.58d | 0d |
| 7 | 1.1.1.1.3 | Analizar y definir solución | 30h | 2013-04-05 08:00 | 2013-04-09 14:00 | 6 | 74.58d |  |
| 8 | 1.1.1.2 | **Definición alcance de proyecto** | 1.17d | 2013-04-09 14:00 | 2013-04-10 16:00 | 4 | 83.42d |  |
| 9 | 1.1.1.2.1 | Identificar supuestos y restricciones | 4h | 2013-04-09 14:00 | 2013-04-09 18:00 |  | 83.92d | 0.5d |
| 10 | 1.1.1.2.2 | Identificar entregables de trabajo | 10h | 2013-04-09 14:00 | 2013-04-10 12:00 |  | 83.42d | 0d |
| 11 | 1.1.1.2.3 | Definir roles participantes | 4h | 2013-04-09 14:00 | 2013-04-09 18:00 |  | 83.92d | 0.5d |
| 12 | 1.1.1.2.4 | Elaborar Project Charter | 4h | 2013-04-10 12:00 | 2013-04-10 16:00 | 9, 10, 11 | 83.42d |  |
| 13 | 1.1.1.2.5 | Elaborar Scope Statement | 4h | 2013-04-10 12:00 | 2013-04-10 16:00 | 9, 10, 11 | 83.42d |  |
| 14 | 1.1.1.3 | **Desglose de trabajo (WBS)** | 10d | 2013-04-09 14:00 | 2013-04-23 14:00 | 4 | 74.58d |  |
| 15 | 1.1.1.3.1 | Identificar componentes y estructurar la WBS | 50h | 2013-04-09 14:00 | 2013-04-13 16:00 |  | 74.58d | 0d |
| 16 | 1.1.1.3.2 | Elaborar diccionario de la WBS | 60h | 2013-04-13 16:00 | 2013-04-20 16:00 | 15 | 74.58d | 0d |
| 17 | 1.1.1.3.3 | Realizar listado de actividades | 10h | 2013-04-20 16:00 | 2013-04-23 14:00 | 16 | 74.58d |  |
| 18 | 1.1.1.4 | **Planificar Iteraciones del proyecto** | 3.33d | 2013-04-03 08:00 | 2013-04-06 12:00 |  | 85.75d |  |
| 19 | 1.1.1.4.1 | Armar lista priorizada de requerimientos con el cliente | 10h | 2013-04-03 08:00 | 2013-04-03 18:00 |  | 85.75d | 0d |
| 20 | 1.1.1.4.2 | Definir requerimientos a incluir en cada iteración | 15h | 2013-04-03 18:00 | 2013-04-05 09:00 | 19 | 85.75d | 0d |
| 21 | 1.1.1.4.3 | Asignar recursos para cada iteración | 10h | 2013-04-05 09:00 | 2013-04-05 19:00 | 20 | 85.75d | 0d |
| 22 | 1.1.1.4.4 | Documentar planificación de las iteraciones | 5h | 2013-04-06 07:00 | 2013-04-06 12:00 | 21 | 85.75d |  |
| 23 | 1.1.2 | **Tiempo** | 5.83d | 2013-04-23 14:00 | 2013-05-01 12:00 | 3 | 248.21d |  |
| 24 | 1.1.2.1 | **Estimación de recursos y duración actividades** | 1.33d | 2013-04-23 14:00 | 2013-04-24 18:00 |  | 248.21d | 0d |
| 25 | 1.1.2.1.1 | Estimar duración actividades | 10h | 2013-04-23 14:00 | 2013-04-24 12:00 |  | 248.21d | 0d |
| 26 | 1.1.2.1.2 | Estimar recursos necesarios | 5h | 2013-04-23 14:00 | 2013-04-23 19:00 |  | 248.62d | 0.42d |
| 27 | 1.1.2.1.3 | Análisis de estimaciones | 6h | 2013-04-24 12:00 | 2013-04-24 18:00 | 26, 25 | 248.21d |  |

| ID | WBS | Task | Duration | Start | Finish | Predecessors | Total slack | Free slack |
| --- | --- | --- | --- | --- | --- | --- | --- | --- |
| 28 | 1.1.2.2 | **Desarrollo del Cronograma** | 2.5d | 2013-04-24 18:00 | 2013-04-27 12:00 | 24 | 248.21d | 0d |
| 29 | 1.1.2.2.1 | Identificar hitos del proyecto | 4h | 2013-04-24 18:00 | 2013-04-25 10:00 |  | 249.54d | 1.33d |
| 30 | 1.1.2.2.2 | Identificar actividades críticas | 10h | 2013-04-24 18:00 | 2013-04-25 16:00 |  | 248.21d | 0d |
| 31 | 1.1.2.2.3 | Analizar secuenciamiento de actividades | 10h | 2013-04-25 16:00 | 2013-04-26 14:00 | 30 | 248.21d | 0d |
| 32 | 1.1.2.2.4 | Definir cronograma | 10h | 2013-04-26 14:00 | 2013-04-27 12:00 | 29, 31 | 248.21d |  |
| 33 | 1.1.2.3 | **Control del Cronograma** | 2d | 2013-04-27 12:00 | 2013-05-01 12:00 | 28 | 248.21d |  |
| 34 | 1.1.2.3.1 | Determinar estado actual | 10h | 2013-04-27 12:00 | 2013-04-30 10:00 |  | 248.21d | 0d |
| 35 | 1.1.2.3.2 | Analizar factores que generan cambios | 10h | 2013-04-30 10:00 | 2013-05-01 08:00 | 34 | 248.21d | 0d |
| 36 | 1.1.2.3.3 | Gestionar cambios en el cronograma | 4h | 2013-05-01 08:00 | 2013-05-01 12:00 | 35 | 248.21d |  |
| 37 | 1.1.3 | **Riesgos** | 6.17d | 2013-08-07 08:00 | 2013-08-14 22:00 | 3 |  |  |
| 38 | 1.1.3.1 | **Planificación de la gestión de riesgos** | 1.25d | 2013-08-07 08:00 | 2013-08-08 11:00 |  | -0.92d | 0d |
| 39 | 1.1.3.1.1 | Definir metodologías | 5h | 2013-08-07 08:00 | 2013-08-07 13:00 |  | -0.08d | 0d |
| 40 | 1.1.3.1.2 | Definir roles y responsabilidades | 10h | 2013-08-07 08:00 | 2013-08-07 18:00 |  | -0.92d | 0d |
| 41 | 1.1.3.1.3 | Asignar recursos | 5h | 2013-08-07 18:00 | 2013-08-08 11:00 | 40 | -0.92d | 0d |
| 42 | 1.1.3.1.4 | Establecer frecuencia de supervisión y control | 2h | 2013-08-07 08:00 | 2013-08-07 10:00 |  | 0.17d |  |
| 43 | 1.1.3.2 | **Identificación y análisis de riesgos** | 2.5d | 2013-08-08 11:00 | 2013-08-10 17:00 | 38 | -0.92d | 0d |
| 44 | 1.1.3.2.1 | Listar riesgos del proyecto | 10h | 2013-08-08 11:00 | 2013-08-09 09:00 |  | -0.92d | 0d |
| 45 | 1.1.3.2.2 | Analizar probabilidad e impacto de los riesgos | 15h | 2013-08-09 09:00 | 2013-08-10 12:00 | 44 | -0.92d | 0d |
| 46 | 1.1.3.2.3 | Elaborar matriz de probabilidad e impacto | 5h | 2013-08-10 12:00 | 2013-08-10 17:00 | 45 | -0.92d | 0d |
| 47 | 1.1.3.3 | **Selección de riesgos y planes de respuesta** | 1.42d | 2013-08-10 17:00 | 2013-08-14 10:00 | 43 | -0.92d | 0d |
| 48 | 1.1.3.3.1 | Elegir criterio de selección | 2h | 2013-08-10 17:00 | 2013-08-10 19:00 |  | -0.92d | 0d |
| 49 | 1.1.3.3.2 | Seleccionar riesgos a contemplar | 5h | 2013-08-13 07:00 | 2013-08-13 12:00 | 48 | -0.92d | 0d |
| 50 | 1.1.3.3.3 | Definir estrategia de respuesta | 2h | 2013-08-13 12:00 | 2013-08-13 14:00 | 49 | -0.92d | 0d |
| 51 | 1.1.3.3.4 | Planificar estrategias | 5h | 2013-08-13 14:00 | 2013-08-13 19:00 | 50 | -0.92d | 0d |
| 52 | 1.1.3.3.5 | Documentar resultados | 3h | 2013-08-14 07:00 | 2013-08-14 10:00 | 51 | -0.92d | 0d |

| ID | WBS | Task | Duration | Start | Finish | Predecessors | Total slack | Free slack |
| --- | --- | --- | --- | --- | --- | --- | --- | --- |
| 53 | 1.1.3.4 | **Supervisión y control** | 1.67d | 2013-08-14 10:00 | 2013-08-15 18:00 | 47 | -0.92d | 0d |
| 54 | 1.1.3.4.1 | Supervisar y reevaluar los riesgos | 15h | 2013-08-14 10:00 | 2013-08-15 13:00 |  | -0.92d | 0d |
| 55 | 1.1.3.4.2 | Identificar nuevos riesgos | 15h | 2013-08-14 10:00 | 2013-08-15 13:00 |  | -0.92d | 0d |
| 56 | 1.1.3.4.3 | Documentar cambios en el plan | 5h | 2013-08-15 13:00 | 2013-08-15 18:00 | 54, 55 | -0.92d | 0d |
| 57 | 1.1.4 | **Gestión de recursos humanos** | 7.5d | 2013-04-03 08:00 | 2013-04-12 14:00 |  | 261.04d |  |
| 58 | 1.1.4.1 | **Planificación** | 0.42d | 2013-04-03 08:00 | 2013-04-03 13:00 |  | 268.12d |  |
| 59 | 1.1.4.1.1 | Definir roles y responsabilidades | 5h | 2013-04-03 08:00 | 2013-04-03 13:00 |  | 268.12d |  |
| 60 | 1.1.4.1.2 | Definir calendario de recursos | 5h | 2013-04-03 08:00 | 2013-04-03 13:00 |  | 268.12d |  |
| 61 | 1.1.4.1.3 | Elaborar plantillas de documentación | 5h | 2013-04-03 08:00 | 2013-04-03 13:00 |  | 268.12d |  |
| 62 | 1.1.4.2 | **Gestión de reuniones** | 7.5d | 2013-04-03 08:00 | 2013-04-12 14:00 |  | 261.04d |  |
| 63 | 1.1.4.2.1 | Definir cheklist de temas a tratar | 20h | 2013-04-03 08:00 | 2013-04-04 16:00 |  | 261.04d | 0d |
| 64 | 1.1.4.2.2 | Establecer lugar, fecha y hora | 5h | 2013-04-03 08:00 | 2013-04-03 13:00 |  | 262.29d | 1.25d |
| 65 | 1.1.4.2.3 | Concretar reunión | 50h | 2013-04-04 16:00 | 2013-04-10 18:00 | 63, 64 | 261.04d | 0d |
| 66 | 1.1.4.2.4 | Completar minuta de reunión semanal | 20h | 2013-04-10 18:00 | 2013-04-12 14:00 | 65 | 261.04d |  |
| 67 | 1.1.5 | Comunicación | 12h? | 2013-04-03 08:00 | 2013-04-04 08:00 |  | 267.54d |  |
| 68 | 1.1.6 | Costo | 12h? | 2013-04-03 08:00 | 2013-04-04 08:00 |  | 267.54d |  |
| 69 | 1.1.7 | Calidad | 12h? | 2013-04-03 08:00 | 2013-04-04 08:00 |  | 267.54d |  |
| 70 | 1.2 | **Producto** | 268.54d | 2013-04-03 08:00 | 2014-04-15 14:30 |  | -18.04d | 0d |
| 71 | 1.2.1 | **Relevamiento** | 24.46d | 2013-04-03 08:00 | 2013-05-07 13:30 |  | -18.04d | 0d |
| 72 | 1.2.1.1 | **Diseñar instrumento de relevamiento** | 8.75d | 2013-04-03 08:00 | 2013-04-13 17:00 |  | -18.04d | 0d |
| 73 | 1.2.1.1.1 | Definir ámbito de relevamiento | 10h | 2013-04-03 08:00 | 2013-04-03 18:00 |  | -10.96d | 0d |
| 74 | 1.2.1.1.2 | Seleccionar la herramienta de relevamiento apropiada | 20h | 2013-04-03 08:00 | 2013-04-04 16:00 |  | -18.04d | 0d |
| 75 | 1.2.1.1.3 | Seleccionar el medio de relevamiento | 10h | 2013-04-04 16:00 | 2013-04-05 14:00 | 73, 74 | -11.79d | 0d |
| 76 | 1.2.1.1.4 | Elaborar listado de preguntas tentativas | 25h | 2013-04-04 16:00 | 2013-04-06 17:00 | 74 | -18.04d | 0d |
| 77 | 1.2.1.1.5 | Seleccionar las preguntas a realizar | 20h | 2013-04-06 17:00 | 2013-04-10 13:00 | 76 | -18.04d | 0d |
| 78 | 1.2.1.1.6 | Diseñar y confeccionar la herramienta | 30h | 2013-04-10 13:00 | 2013-04-12 19:00 | 77 | -18.04d | 0d |
| 79 | 1.2.1.1.7 | Estimar cantidad de formularios y emitir los mismos | 10h | 2013-04-13 07:00 | 2013-04-13 17:00 | 78 | -18.04d | 0d |

| ID | WBS | Task | Duration | Start | Finish | Predecessors | Total slack | Free slack |
| --- | --- | --- | --- | --- | --- | --- | --- | --- |
| 80 | 1.2.1.2 | **Relevar información** | 5d | 2013-04-13 17:00 | 2013-04-20 17:00 | 72 | -18.04d | 0d |
| 81 | 1.2.1.2.1 | Analizar el medio de relevamiento | 5h | 2013-04-13 17:00 | 2013-04-16 10:00 |  | -18.04d | 0d |
| 82 | 1.2.1.2.2 | Determinar fecha y hora de relevamiento. En caso de ser necesario, concertar cita con stakeholder | 10h | 2013-04-16 10:00 | 2013-04-17 08:00 | 81 | -18.04d | 0d |
| 83 | 1.2.1.2.3 | Preparar el relevamiento | 10h | 2013-04-17 08:00 | 2013-04-17 18:00 | 82 | -18.04d | 0d |
| 84 | 1.2.1.2.4 | Realizar relevamiento mediante la herramienta | 30h | 2013-04-17 18:00 | 2013-04-20 12:00 | 83 | -18.04d | 0d |
| 85 | 1.2.1.2.5 | Concluir el relevamiento realizado | 5h | 2013-04-20 12:00 | 2013-04-20 17:00 | 84 | -18.04d | 0d |
| 86 | 1.2.1.3 | **Analizar Información** | 4.58d | 2013-04-20 17:00 | 2013-04-27 12:00 | 80 | -18.04d | 0d |
| 87 | 1.2.1.3.1 | Organizar información recabada de acuerdo a criterios que simplifiquen su análisis | 5h | 2013-04-20 17:00 | 2013-04-23 10:00 |  | -18.04d | 0d |
| 88 | 1.2.1.3.2 | Analizar la información | 10h | 2013-04-23 10:00 | 2013-04-24 08:00 | 87 | -18.04d | 0d |
| 89 | 1.2.1.3.3 | Debatir grupalmente los resultados del análisis para comprender el funcionamiento de la organización | 20h | 2013-04-24 08:00 | 2013-04-25 16:00 | 88 | -18.04d | 0d |
| 90 | 1.2.1.3.4 | Elaborar conclusión de relevamiento destacando nuevos puntos a investigar | 20h | 2013-04-25 16:00 | 2013-04-27 12:00 | 89 | -18.04d | 0d |
| 91 | 1.2.1.4 | **Documentar el proceso de negocio** | 5.5d | 2013-04-27 12:00 | 2013-05-04 18:00 | 86 | -18.04d | 0d |
| 92 | 1.2.1.4.1 | Identificar y discutir grupalmente los diferentes procesos de negocio presentes en la organización | 5h | 2013-04-27 12:00 | 2013-04-27 17:00 |  | -18.04d | 0d |
| 93 | 1.2.1.4.2 | Seleccionar los procesos que serán afectados por el sistema de información | 6h | 2013-04-27 17:00 | 2013-04-30 11:00 | 92 | -18.04d | 0d |
| 94 | 1.2.1.4.3 | Confeccionar mapa global de los procesos de entorno | 10h | 2013-04-30 11:00 | 2013-05-01 09:00 | 93 | -14.29d | 0d |
| 95 | 1.2.1.4.4 | Describir los procesos identificados a los que da soporte el sistema de información | 20h | 2013-04-30 11:00 | 2013-05-01 19:00 | 93 | -18.04d | 0d |
| 96 | 1.2.1.4.5 | Identificar los problemas de los procesos actuales | 10h | 2013-05-02 07:00 | 2013-05-02 17:00 | 95 | -18.04d | 0d |
| 97 | 1.2.1.4.6 | Establecer puntos de mejora | 5h | 2013-05-02 17:00 | 2013-05-03 10:00 | 96, 95 | -18.04d | 0d |
| 98 | 1.2.1.4.7 | Desarrollar una propuesta de mejora que contemple los problemas y los puntos de mejora identificados | 20h | 2013-05-03 10:00 | 2013-05-04 18:00 | 97 | -18.04d | 0d |
| 99 | 1.2.1.5 | **Aceptación del Cliente** | 0.62d | 2013-05-04 18:00 | 2013-05-07 13:30 | 91 | -18.04d | 0d |
| 100 | 1.2.1.5.1 | Enviar la documentación del proceso de negocio al cliente | 1h | 2013-05-04 18:00 | 2013-05-04 19:00 |  | -18.04d | 0d |
| 101 | 1.2.1.5.2 | Evaluar retroalimentación del cliente | 4h | 2013-05-07 07:00 | 2013-05-07 11:00 | 100 | -18.04d | 0d |
| 102 | 1.2.1.5.3 | Actualizar documentación | 2h | 2013-05-07 11:00 | 2013-05-07 13:00 | 101 | -18.04d | 0d |
| 103 | 1.2.1.5.4 | Registrar aprobacion del cliente | 0.5h | 2013-05-07 13:00 | 2013-05-07 13:30 | 102 | -18.04d | 0d |

| ID | WBS | Task | Duration | Start | Finish | Predecessors | Total slack | Free slack |
| --- | --- | --- | --- | --- | --- | --- | --- | --- |
| 104 | 1.2.2 | **Requerimiento 1...N** | 18.42d | 2013-05-07 13:30 | 2013-05-31 18:30 | 71 | -18.04d | 0d |
| 105 | 1.2.2.1 | **Especificar requerimientos del sistema** | 3.75d | 2013-05-07 13:30 | 2013-05-11 10:30 |  | -18.04d | 0d |
| 106 | 1.2.2.1.1 | Identificar requerimientos globales de la organización | 5h | 2013-05-07 13:30 | 2013-05-07 18:30 |  | -18.04d | 0d |
| 107 | 1.2.2.1.2 | Identificar requerimientos detallados de la organización | 20h | 2013-05-07 18:30 | 2013-05-09 14:30 | 106 | -18.04d | 0d |
| 108 | 1.2.2.1.3 | Realizar descripción de requerimientos funcionales | 20h | 2013-05-09 14:30 | 2013-05-11 10:30 | 107 | -18.04d | 0d |
| 109 | 1.2.2.1.4 | Realizar descripción de requerimientos no funcionales | 10h | 2013-05-09 14:30 | 2013-05-10 12:30 | 107 | -17.21d | 0d |
| 110 | 1.2.2.2 | **Estructurar modelo de casos de uso del sistema** | 14.67d | 2013-05-11 10:30 | 2013-05-31 18:30 | 105 | -18.04d | 0d |
| 111 | 1.2.2.2.1 | Identificar y describir actores | 4h | 2013-05-11 10:30 | 2013-05-11 14:30 |  | -18.04d | 0d |
| 112 | 1.2.2.2.2 | Identificar relaciones entre los actores | 2h | 2013-05-11 14:30 | 2013-05-11 16:30 | 111 | -18.04d | 0d |
| 113 | 1.2.2.2.3 | Identificar Casos de Uso del sistema | 30h | 2013-05-11 16:30 | 2013-05-16 10:30 | 112 | -18.04d | 0d |
| 114 | 1.2.2.2.4 | Describir objetivos de casos de uso del sistema | 40h | 2013-05-16 10:30 | 2013-05-21 14:30 | 113 | -18.04d | 0d |
| 115 | 1.2.2.2.5 | Describir trazo grueso de casos de uso del sistema | 7h | 2013-05-16 10:30 | 2013-05-16 17:30 | 113 | -8.62d | 0d |
| 116 | 1.2.2.2.6 | Describir trazo fino de CU esenciales del sistema | 50h | 2013-05-16 10:30 | 2013-05-22 12:30 | 113 | -10.54d | 0d |
| 117 | 1.2.2.2.7 | Identificar relaciones entre casos de uso | 100h | 2013-05-21 14:30 | 2013-05-31 18:30 | 114 | -18.04d | 0d |
| 118 | 1.2.2.2.8 | Construir diagramas de caso de uso del sistema | 10h | 2013-05-16 17:30 | 2013-05-17 15:30 | 115 | -8.62d | 0d |
| 119 | 1.2.2.2.9 | Confeccionar documento de especificación de requerimiento del software | 10h | 2013-05-17 15:30 | 2013-05-18 13:30 | 118 | -8.62d | 0d |
| 120 | 1.2.2.3 | **Realizar modelo de objetos del dominio del problema(MODP)** | 5.83d | 2013-05-11 10:30 | 2013-05-21 08:30 | 105 | -9.21d | 0d |
| 121 | 1.2.2.3.1 | Identificar clases del dominio | 15h | 2013-05-11 10:30 | 2013-05-14 13:30 |  | -9.21d | 0d |
| 122 | 1.2.2.3.2 | Identificar atributos y métodos de clase | 30h | 2013-05-14 13:30 | 2013-05-17 07:30 | 121 | -9.21d | 0d |
| 123 | 1.2.2.3.3 | Identificar relaciones entre clases | 10h | 2013-05-17 07:30 | 2013-05-17 17:30 | 122 | -9.21d | 0d |
| 124 | 1.2.2.3.4 | Confecionar el diagrama de clases | 15h | 2013-05-17 17:30 | 2013-05-21 08:30 | 123 | -9.21d | 0d |
| 125 | 1.2.2.4 | **Construir prototipo de interfaz** | 4d | 2013-05-07 13:30 | 2013-05-11 13:30 |  | -3.62d | 0d |
| 126 | 1.2.2.4.1 | Definir un template para la interfaz y prototipos de interfaz | 15h | 2013-05-07 13:30 | 2013-05-08 16:30 |  | -3.62d | 0d |
| 127 | 1.2.2.4.2 | Identificar los casos de uso del sistema que requieren prototipos de interfaz | 2h | 2013-05-08 16:30 | 2013-05-08 18:30 | 126 | -3.62d | 0d |
| 128 | 1.2.2.4.3 | Definir los datos necesarios para cada interfaz | 6h | 2013-05-08 18:30 | 2013-05-09 12:30 | 127 | -3.62d | 0d |
| 129 | 1.2.2.4.4 | Diseñar interfaces de cada caso de uso identificado | 20h | 2013-05-09 12:30 | 2013-05-11 08:30 | 128 | -3.62d | 0d |
| 130 | 1.2.2.4.5 | Definir y diseñar navegabilidad de las interfaces | 3h | 2013-05-11 08:30 | 2013-05-11 11:30 | 129 | -3.62d | 0d |
| 131 | 1.2.2.4.6 | Recorrer el flujo de trabajo de cada caso de uso mediante las interfaces | 2h | 2013-05-11 11:30 | 2013-05-11 13:30 | 130 | -3.62d | 0d |

| ID | WBS | Task | Duration | Start | Finish | Predecessors | Total slack | Free slack |
| --- | --- | --- | --- | --- | --- | --- | --- | --- |
| 132 | 1.2.2.5 | **Validación del Cliente** | 3.17d | 2013-05-07 13:30 | 2013-05-10 15:30 |  | -2.79d | 0d |
| 133 | 1.2.2.5.1 | Organizar reunión con el cliente | 6h | 2013-05-07 13:30 | 2013-05-08 07:30 |  | -2.79d | 0d |
| 134 | 1.2.2.5.2 | Presentar casos de uso identificados y evaluar su validez | 20h | 2013-05-08 07:30 | 2013-05-09 15:30 | 133 | -2.79d | 0d |
| 135 | 1.2.2.5.3 | Validar CU esenciales recorriendo los diferentes escenarios mediante las interfaces gráficas | 10h | 2013-05-09 15:30 | 2013-05-10 13:30 | 134 | -2.79d | 0d |
| 136 | 1.2.2.5.4 | Registrar aportes y modificaciones hechas por el cliente | 2h | 2013-05-10 13:30 | 2013-05-10 15:30 | 135 | -2.79d | 0d |
| 137 | 1.2.3 | **Análisis 1...N** | 13.17d | 2013-05-17 10:30 | 2013-06-05 12:30 | 104 | -7.38d | 0d |
| 138 | 1.2.3.1 | **Realización de casos de uso esenciales** | 59h | 2013-05-17 10:30 | 2013-05-23 21:30 |  |  |  |
| 139 | 1.2.3.1.1 | Identificar clases de análisis participantes | 10h | 2013-05-17 10:30 | 2013-05-18 08:30 |  | -7.38d | 0d |
| 140 | 1.2.3.1.2 | Describir interacciones entre objetos de análisis | 100h | 2013-05-18 08:30 | 2013-05-30 12:30 | 139 | -7.38d | 0d |
| 141 | 1.2.3.1.3 | Documentar requisitos especiales | 5h | 2013-05-30 12:30 | 2013-05-30 17:30 | 140 | -7.38d | 0d |
| 142 | 1.2.3.1.4 | Estructurar diagrama de clases de analisis | 30h | 2013-05-30 17:30 | 2013-06-04 11:30 | 141 | -7.38d | 0d |
| 143 | 1.2.3.2 | **Estructurar artefactos de análisis en paquetes de análisis** | 2.5d | 2013-05-31 18:30 | 2013-06-05 12:30 |  | -9.25d | 0d |
| 144 | 1.2.3.2.1 | Identificar clases con alta cohesión | 8h | 2013-05-31 18:30 | 2013-06-01 14:30 |  | -9.25d | 0d |
| 145 | 1.2.3.2.2 | Estructurar las clases en paquetes de análisis | 12h | 2013-06-01 14:30 | 2013-06-04 14:30 | 144 | -9.25d | 0d |
| 146 | 1.2.3.2.3 | Identificar relaciones entre paquetes de análisis | 6h | 2013-06-04 14:30 | 2013-06-05 08:30 | 145 | -9.25d | 0d |
| 147 | 1.2.3.2.4 | Verificar los paquetes buscando alta cohesión entre sus componentes y bajo acoplamiento con otros paquetes | 4h | 2013-06-05 08:30 | 2013-06-05 12:30 | 146 | -9.25d | 0d |
| 148 | 1.2.4 | **Diseño 1...N** | 15.46d | 2013-05-23 21:30 | 2013-06-14 12:30 | 137 | -0.79d | 0d |
| 149 | 1.2.4.1 | **Diseñar la arquitectura** | 28h | 2013-05-23 21:30 | 2013-05-28 08:30 |  |  |  |
| 150 | 1.2.4.1.1 | Clasificar los Requisitos No Funcionales | 5h | 2013-05-24 07:00 | 2013-05-24 12:00 |  | -0.79d | 0d |
| 151 | 1.2.4.1.2 | Construir vista de despliegue de nodos | 15h | 2013-05-25 15:00 | 2013-05-28 18:00 | 150, 153 | -0.79d | 0d |
| 152 | 1.2.4.1.3 | Construir vista de despliegue de hardware | 15h | 2013-05-24 12:00 | 2013-05-25 15:00 | 150 | 0.46d |  |
| 153 | 1.2.4.1.4 | Contruir vista de subsistemas e interfaces | 15h | 2013-05-24 12:00 | 2013-05-25 15:00 | 150 | -0.79d | 0d |
| 154 | 1.2.4.1.5 | Identificar Patrones de arquitectura a aplicar | 10h | 2013-05-24 12:00 | 2013-05-25 10:00 | 150 | 0.88d |  |
| 155 | 1.2.4.2 | **Realizar Diagrama de Transición de estados** | 3.92d | 2013-06-05 12:30 | 2013-06-11 11:30 |  | 0d |  |
| 156 | 1.2.4.2.1 | Identificar Clases con transición de estados | 7h | 2013-06-05 12:30 | 2013-06-06 07:30 |  | 0d |  |
| 157 | 1.2.4.2.2 | Identificar estados de las clases | 20h | 2013-06-06 07:30 | 2013-06-07 15:30 | 156 | 0d |  |
| 158 | 1.2.4.2.3 | Identificar transiciones | 10h | 2013-06-07 15:30 | 2013-06-08 13:30 | 157 | 0d |  |
| 159 | 1.2.4.2.4 | Realizar diagrama de transición de estados | 10h | 2013-06-08 13:30 | 2013-06-11 11:30 | 158 | 0d |  |

| ID | WBS | Task | Duration | Start | Finish | Predecessors | Total slack | Free slack |
| --- | --- | --- | --- | --- | --- | --- | --- | --- |
| 160 | 1.2.4.3 | **Estructurar subsistemas de diseño** | 3.75d | 2013-06-05 12:30 | 2013-06-11 09:30 |  | 3.25d |  |
| 161 | 1.2.4.3.1 | Identificar subsistemas | 10h | 2013-06-05 12:30 | 2013-06-06 10:30 |  | 3.25d | 0d |
| 162 | 1.2.4.3.2 | Identificar interfaces entre subsistemas | 15h | 2013-06-06 10:30 | 2013-06-07 13:30 | 161 | 3.25d | 0d |
| 163 | 1.2.4.3.3 | Establecer relaciones entre subsistemas | 10h | 2013-06-07 13:30 | 2013-06-08 11:30 | 162 | 3.25d | 0d |
| 164 | 1.2.4.3.4 | Realizar modelo de diseño | 10h | 2013-06-08 11:30 | 2013-06-11 09:30 | 163 | 3.25d |  |
| 165 | 1.2.4.4 | **Mapeo del Modelo de Objetos a BDR** | 3.08d | 2013-06-11 11:30 | 2013-06-14 12:30 | 155 | 0d |  |
| 166 | 1.2.4.4.1 | Configurar la herramienta ORM para generar el mapeo automaticamente. | 10h | 2013-06-11 11:30 | 2013-06-12 09:30 |  | 0d |  |
| 167 | 1.2.4.4.2 | Codificar las clases utilizando las herramientas brindas por hibernate. | 20h | 2013-06-12 09:30 | 2013-06-13 17:30 | 166 | 0d |  |
| 168 | 1.2.4.4.3 | Realizar la compilación del proyecto para generar la estructura de la BD a través de la herramienta | 5h | 2013-06-13 17:30 | 2013-06-14 10:30 | 167 | 0d |  |
| 169 | 1.2.4.4.4 | Generar DER | 2h | 2013-06-14 10:30 | 2013-06-14 12:30 | 168 | 0d |  |
| 170 | 1.2.5 | **Implementación 1...N** | 194.58d | 2013-06-14 12:30 | 2014-03-15 07:30 | 148 | 0d |  |
| 171 | 1.2.5.1 | **Implementar la arquitectura** | 2.92d | 2013-06-14 12:30 | 2013-06-19 11:30 |  | 191.67d |  |
| 172 | 1.2.5.1.1 | Identificar componentes relevantes para la arquitectura | 20h | 2013-06-14 12:30 | 2013-06-18 08:30 |  | 191.67d | 0d |
| 173 | 1.2.5.1.2 | Asignar componentes a nodos | 15h | 2013-06-18 08:30 | 2013-06-19 11:30 | 172 | 191.67d |  |
| 174 | 1.2.5.2 | **Integrar sistema** | 12.92d | 2014-02-26 08:30 | 2014-03-15 07:30 | 188 | 0d |  |
| 175 | 1.2.5.2.1 | Definir construcciones a integrar | 30h | 2014-02-26 08:30 | 2014-02-28 14:30 |  | 0d |  |
| 176 | 1.2.5.2.2 | Comprobar compatibilidad de construcciones | 10h | 2014-02-28 14:30 | 2014-03-01 12:30 | 175 | 0d |  |
| 177 | 1.2.5.2.3 | Crear plan de integración de construcción | 15h | 2014-03-01 12:30 | 2014-03-04 15:30 | 176 | 0d |  |
| 178 | 1.2.5.2.4 | Integrar construcciones de sistema | 100h | 2014-03-04 15:30 | 2014-03-15 07:30 | 177 | 0d |  |
| 179 | 1.2.5.3 | **Implementar subsistema** | 95d | 2013-10-02 16:30 | 2014-02-13 16:30 | 183 | 0d |  |
| 180 | 1.2.5.3.1 | Definir objetivos y alcances del subsistema | 40h | 2013-10-02 16:30 | 2013-10-08 08:30 |  | 0d |  |
| 181 | 1.2.5.3.2 | Implementar subsistema en la construcción actual | 1000h | 2013-10-08 08:30 | 2014-02-01 12:30 | 180 | 0d |  |
| 182 | 1.2.5.3.3 | Mantener los contenidos del subsistema | 100h | 2014-02-01 12:30 | 2014-02-13 16:30 | 181 | 0d |  |
| 183 | 1.2.5.4 | **Implementar clase** | 78.33d | 2013-06-14 12:30 | 2013-10-02 16:30 |  | 0d |  |
| 184 | 1.2.5.4.1 | Identificar clases de diseño a implementar | 60h | 2013-06-14 12:30 | 2013-06-21 12:30 |  | 0d |  |
| 185 | 1.2.5.4.2 | Generar código a partir de las clases de diseño | 320h | 2013-06-21 12:30 | 2013-07-30 08:30 | 184 | 0d |  |
| 186 | 1.2.5.4.3 | Implementar operaciones correspondientes en cada clase | 500h | 2013-07-30 08:30 | 2013-09-25 16:30 | 185 | 0d |  |
| 187 | 1.2.5.4.4 | Comprobar que las clases implementan las interfaces correspondientes | 60h | 2013-09-25 16:30 | 2013-10-02 16:30 | 186 | 0d |  |

| ID | WBS | Task | Duration | Start | Finish | Predecessors | Total slack | Free slack |
| --- | --- | --- | --- | --- | --- | --- | --- | --- |
| 188 | 1.2.5.5 | **Realizar pruebas de unidad** | 8.33d | 2014-02-13 16:30 | 2014-02-26 08:30 | 179 | 0d |  |
| 189 | 1.2.5.5.1 | Realizar plan de pruebas de unidad | 20h | 2014-02-13 16:30 | 2014-02-15 12:30 |  | 0d |  |
| 190 | 1.2.5.5.2 | Diseñar pruebas de caja negra, caja blanca y basadas en estados según corresponda | 40h | 2014-02-15 12:30 | 2014-02-20 16:30 | 189 | 0d |  |
| 191 | 1.2.5.5.3 | Realizar pruebas de unidad | 20h | 2014-02-20 16:30 | 2014-02-22 12:30 | 190 | 0d |  |
| 192 | 1.2.5.5.4 | Documentar resultados | 20h | 2014-02-22 12:30 | 2014-02-26 08:30 | 191 | 0d |  |
| 193 | 1.2.6 | **Prueba 1...N** | 17.83d | 2014-03-15 07:30 | 2014-04-09 17:30 | 170 | 0d |  |
| 194 | 1.2.6.1 | **Planificar pruebas** | 1.67d | 2014-03-15 07:30 | 2014-03-18 15:30 |  | 0d |  |
| 195 | 1.2.6.1.1 | Describir estrategia de prueba | 10h | 2014-03-15 07:30 | 2014-03-15 17:30 |  | 0d |  |
| 196 | 1.2.6.1.2 | Estimar los recursos para la prueba | 5h | 2014-03-15 17:30 | 2014-03-18 10:30 | 195 | 0d |  |
| 197 | 1.2.6.1.3 | Planificar el esfuerzo de la prueba | 5h | 2014-03-18 10:30 | 2014-03-18 15:30 | 196 | 0d |  |
| 198 | 1.2.6.2 | **Diseñar pruebas** | 7.5d | 2014-03-18 15:30 | 2014-03-28 09:30 | 194 | 0d |  |
| 199 | 1.2.6.2.1 | Identificar casos de prueba | 10h | 2014-03-18 15:30 | 2014-03-19 13:30 |  | 0d |  |
| 200 | 1.2.6.2.2 | Describir casos de prueba | 30h | 2014-03-19 13:30 | 2014-03-22 07:30 | 199 | 0d |  |
| 201 | 1.2.6.2.3 | Estructurar procedimiento de prueba | 50h | 2014-03-22 07:30 | 2014-03-28 09:30 | 200 | 0d |  |
| 202 | 1.2.6.3 | **Automatizar pruebas** | 5d | 2014-03-18 15:30 | 2014-03-25 15:30 | 194 | 2.5d |  |
| 203 | 1.2.6.3.1 | Identificar procedimientos de prueba automatizables | 20h | 2014-03-18 15:30 | 2014-03-20 11:30 |  | 2.5d | 0d |
| 204 | 1.2.6.3.2 | Crear componente de prueba | 40h | 2014-03-20 11:30 | 2014-03-25 15:30 | 203 | 2.5d |  |
| 205 | 1.2.6.4 | **Realizar pruebas** | 7.08d | 2014-03-28 09:30 | 2014-04-08 10:30 | 198, 202 | 0d |  |
| 206 | 1.2.6.4.1 | Realizar pruebas de integración | 30h | 2014-03-28 09:30 | 2014-04-01 15:30 |  | 4.17d |  |
| 207 | 1.2.6.4.2 | Realizar pruebas de sistema | 80h | 2014-03-28 09:30 | 2014-04-05 17:30 |  | 0d |  |
| 208 | 1.2.6.4.3 | Registrar resultados de pruebas | 5h | 2014-04-05 17:30 | 2014-04-08 10:30 | 206, 207 | 0d |  |
| 209 | 1.2.6.5 | **Evaluar pruebas** | 1.58d | 2014-04-08 10:30 | 2014-04-09 17:30 | 205 | 0d |  |
| 210 | 1.2.6.5.1 | Evaluar esfuerzos de prueba | 5h | 2014-04-08 10:30 | 2014-04-08 15:30 |  | 0d |  |
| 211 | 1.2.6.5.2 | Comparar resultados con los objetivos establecidos en el plan de pruebas | 4h | 2014-04-08 15:30 | 2014-04-09 07:30 | 210 | 0d |  |
| 212 | 1.2.6.5.3 | Establecer métricas y fiabilidad del sistema | 10h | 2014-04-09 07:30 | 2014-04-09 17:30 | 211 | 0d |  |

| ID | WBS | Task | Duration | Start | Finish | Predecessors | Total slack | Free slack |
| --- | --- | --- | --- | --- | --- | --- | --- | --- |
| 213 | 1.2.7 | **Distribución del SW** | 3.75d | 2014-04-09 17:30 | 2014-04-15 14:30 | 193 | 0d |  |
| 214 | 1.2.7.1 | **Planificar la distribución** | 0.92d | 2014-04-09 17:30 | 2014-04-10 16:30 |  | 2.83d |  |
| 215 | 1.2.7.1.1 | Definir fecha de instalación del sistema | 4h | 2014-04-09 17:30 | 2014-04-10 09:30 |  | 3d | 0.17d |
| 216 | 1.2.7.1.2 | Definir lugar y fecha de capacitaciones | 6h | 2014-04-09 17:30 | 2014-04-10 11:30 |  | 2.83d | 0d |
| 217 | 1.2.7.1.3 | Definir recursos asignados a la distribución | 5h | 2014-04-10 11:30 | 2014-04-10 16:30 | 215, 216 | 2.83d |  |
| 218 | 1.2.7.2 | **Producir unidad de distribución** | 2.92d | 2014-04-09 17:30 | 2014-04-12 16:30 |  | 0.83d |  |
| 219 | 1.2.7.2.1 | Definir forma de entrega del SW | 5h | 2014-04-09 17:30 | 2014-04-10 10:30 |  | 0.83d | 0d |
| 220 | 1.2.7.2.2 | Identificar los artefactos necesarios para instalar y usar el sistema | 10h | 2014-04-10 10:30 | 2014-04-11 08:30 | 219 | 0.83d | 0d |
| 221 | 1.2.7.2.3 | Empaquetar el producto | 20h | 2014-04-11 08:30 | 2014-04-12 16:30 | 220 | 0.83d |  |
| 222 | 1.2.7.3 | **Capacitaciones** | 3.75d | 2014-04-09 17:30 | 2014-04-15 14:30 |  | 0d |  |
| 223 | 1.2.7.3.1 | Confeccionar Material de Soporte | 30h | 2014-04-09 17:30 | 2014-04-12 11:30 |  | 0d |  |
| 224 | 1.2.7.3.2 | Organizar capacitaciones | 15h | 2014-04-09 17:30 | 2014-04-11 08:30 |  | 1.25d |  |
| 225 | 1.2.7.3.3 | Realizar las capacitaciones correspondientes | 10h | 2014-04-12 11:30 | 2014-04-15 09:30 | 223, 224 | 0d |  |
| 226 | 1.2.7.3.4 | Evaluar la capacitacion | 5h | 2014-04-15 09:30 | 2014-04-15 14:30 | 225 | 0d |  |
| 227 | 1.2.8 | **Nivel de Esfuerzo** | 13.33d | 2013-04-03 08:00 | 2013-04-20 12:00 |  | 255.21d |  |
| 228 | 1.2.8.1 | **Organización de reuniones** | 2.92d | 2013-04-03 08:00 | 2013-04-05 19:00 |  | 265.62d |  |
| 229 | 1.2.8.1.1 | Establecer lugar, fecha y hora de reunión | 5h | 2013-04-03 08:00 | 2013-04-03 13:00 |  | 265.62d | 0d |
| 230 | 1.2.8.1.2 | Asistir a la reunión | 20h | 2013-04-03 13:00 | 2013-04-05 09:00 | 229 | 265.62d | 0d |
| 231 | 1.2.8.1.3 | Documentar temas tratados | 10h | 2013-04-05 09:00 | 2013-04-05 19:00 | 230 | 265.62d |  |
| 232 | 1.2.8.2 | **Presentaciones** | 4.17d | 2013-04-03 08:00 | 2013-04-09 10:00 |  | 264.38d |  |
| 233 | 1.2.8.2.1 | Definir temas a presentar | 15h | 2013-04-03 08:00 | 2013-04-04 11:00 |  | 264.38d | 0d |
| 234 | 1.2.8.2.2 | Estructurar presentación | 20h | 2013-04-04 11:00 | 2013-04-05 19:00 | 233 | 264.38d | 0d |
| 235 | 1.2.8.2.3 | Llevar a cabo la presentación | 15h | 2013-04-06 07:00 | 2013-04-09 10:00 | 234 | 264.38d |  |
| 236 | 1.2.8.3 | **Investigaciones** | 13.33d | 2013-04-03 08:00 | 2013-04-20 12:00 |  | 255.21d |  |
| 237 | 1.2.8.3.1 | Definir temas a investigar | 10h | 2013-04-03 08:00 | 2013-04-03 18:00 |  | 255.21d | 0d |
| 238 | 1.2.8.3.2 | Buscar material relevante | 50h | 2013-04-03 18:00 | 2013-04-10 08:00 | 237 | 255.21d | 0d |
| 239 | 1.2.8.3.3 | Asimilar los conocimientos (teórica y prácticamente) | 100h | 2013-04-10 08:00 | 2013-04-20 12:00 | 238 | 255.21d |  |

| ID | WBS | Task | Duration | Start | Finish | Predecessors | Total slack | Free slack |
| --- | --- | --- | --- | --- | --- | --- | --- | --- |
| 240 | 1.2.8.4 | **Informes** | 5d | 2013-04-03 08:00 | 2013-04-10 08:00 |  | 263.54d |  |
| 241 | 1.2.8.4.1 | Diseñar documento que sirva como plantilla de estructura y estilo para los informes | 3h | 2013-04-03 08:00 | 2013-04-03 11:00 |  | 265.79d | 2.25d |
| 242 | 1.2.8.4.2 | Estructurar la información pertinente al informe | 30h | 2013-04-03 08:00 | 2013-04-05 14:00 |  | 263.54d | 0d |
| 243 | 1.2.8.4.3 | Estructurar el informe | 10h | 2013-04-05 14:00 | 2013-04-06 12:00 | 241, 242 | 263.54d | 0d |
| 244 | 1.2.8.4.4 | Realizar una revisión del mismo | 5h | 2013-04-06 12:00 | 2013-04-06 17:00 | 243 | 263.54d | 0d |
| 245 | 1.2.8.4.5 | Realizar correcciones en caso de que corresponda | 15h | 2013-04-06 17:00 | 2013-04-10 08:00 | 244 | 263.54d |  |
